# Unipik

How a schedule from GanttProject changed from version to version. A marks actual dates.

## Version 1 (saved 2016-11-09)

Note of the change: ajout PP 19

| ID | WBS | Task | Duration | Start | Finish | Predecessors | Complete |
| --- | --- | --- | --- | --- | --- | --- | --- |
| 1 | 1 | **Semestre 1** | 83d | 2016-01-29 | 2016-05-27 |  | 76% |
| 2 |  | E/A | 5d | 2016-01-29 | 2016-02-04 |  | 100% |
| 3 |  | DSE | 5d | 2016-02-01 | 2016-02-05 |  | 100% |
| 4 |  | DSI | 18d | 2016-02-01 | 2016-02-24 |  | 100% |
| 5 |  | PTV - lot1 | 5d | 2016-02-25 | 2016-03-02 | 3, 4 | 100% |
| 6 |  | Formation ArgoUml | 1d | 2016-02-26 | 2016-02-26 |  | 100% |
| 7 |  | DCP - lot1 | 5d | 2016-02-25 | 2016-03-02 | 3, 4 | 100% |
| 8 |  | PTI - lot1 | 5d | 2016-03-03 | 2016-03-09 | 5 | 100% |
| 9 |  | Formation Symphony | 15d | 2016-03-07 | 2016-03-25 |  | 100% |
| 10 |  | PTU - lot1 | 7d | 2016-03-10 | 2016-03-18 | 8 | 100% |
| 11 |  | Cahier de Recette - lot1 | 2d | 2016-03-16 | 2016-03-17 |  | 100% |
| 12 |  | Developpement + Tests - lot1 | 7d | 2016-03-10 | 2016-03-18 |  | 100% |
| 13 |  | Formation PHPUnit TU | 4d | 2016-03-29 | 2016-04-01 |  |  |
| 14 |  | PTV - lot2 | 4d | 2016-03-29 | 2016-04-01 | 12FS+5d | 100% |
| 15 |  | DCP - lot2 | 16d | 2016-03-29 | 2016-04-19 | 12FS+5d | 100% |
| 16 |  | Formation PHP Unit TI | 4d | 2016-03-29 | 2016-04-01 |  |  |
| 17 |  | Formation Bootstrap | 4d | 2016-03-29 | 2016-04-01 |  | 100% |
| 18 |  | PTI - lot2 | 1d | 2016-04-18 | 2016-04-18 | 14FS+10d | 100% |
| 19 |  | DCD - lot2 | 16d | 2016-03-29 | 2016-04-19 |  | 100% |
| 20 |  | PTU - lot2 | 2d | 2016-04-19 | 2016-04-20 | 18 | 100% |
| 21 |  | Modèle relationnel | 10d | 2016-04-18 | 2016-04-29 |  |  |
| 22 |  | Developpement + tests - lot2 | 18d | 2016-05-02 | 2016-05-27 | 19, 21 |  |
| 23 | 2 | **Semestre 2 lot 2** | 29d | 2016-09-05 | 2016-10-13 |  | 93% |
| 24 |  | Reprise en main des outils | 5d | 2016-09-05 | 2016-09-09 |  | 100% |
| 25 |  | Scripts création BD | 2d | 2016-09-12 | 2016-09-13 | 24 | 100% |
| 26 |  | Scripts modification BD | 2d | 2016-09-12 | 2016-09-13 | 24 | 100% |
| 27 |  | Repository pour séléction en BD | 6d | 2016-09-12 | 2016-09-19 | 24 | 100% |
| 28 |  | Diagramme d'URL | 1d | 2016-09-12 | 2016-09-12 | 24 | 100% |
| 29 |  | Créer Bénévole BE | 4d | 2016-09-12 | 2016-09-15 | 24 | 100% |
| 30 |  | Créer Bénévole FE | 3d | 2016-09-16 | 2016-09-20 | 24, 28, 29 | 100% |
| 31 |  | Créer Etablissement BE | 3d | 2016-09-21 | 2016-09-23 | 24, 29, 30 | 100% |
| 32 |  | Créer Etablissement FE | 3d | 2016-09-26 | 2016-09-28 | 24, 28, 31 | 100% |
| 33 |  | Formulaire de demande BE | 5d | 2016-09-29 | 2016-10-05 | 24, 32 | 100% |
| 34 |  | Formulaire de demande FE | 6d | 2016-10-06 | 2016-10-13 | 28, 33 | 100% |
| 35 |  | Tests Unitaire | 7d | 2016-09-16 | 2016-09-26 |  | 35% |
| 36 |  | Modifier Bénévole BE | 1d | 2016-09-16 | 2016-09-16 | 24, 29 | 100% |
| 37 |  | Modifier Bénévole FE | 1d | 2016-09-19 | 2016-09-19 | 24, 28, 36 | 100% |
| 38 |  | Modifier Etablissement BE | 3d | 2016-09-19 | 2016-09-21 | 24, 28, 36 | 100% |
| 39 |  | Modifier Etablissement FE | 1d | 2016-09-22 | 2016-09-22 | 24, 28, 38 | 100% |
| 40 |  | Supprimer Bénévole BE | 2d | 2016-09-19 | 2016-09-20 | 24, 36 | 100% |
| 41 |  | Supprimer Bénévole FE | 1d | 2016-09-21 | 2016-09-21 | 24, 28, 40 | 100% |
| 42 |  | Supprimer Etablissement BE | 2d | 2016-09-21 | 2016-09-22 | 24, 40 | 100% |
| 43 |  | Supprimer Etablissment FE | 1d | 2016-09-23 | 2016-09-23 | 24, 28, 42 | 100% |
| 44 |  | Formation PHP + Symfony | 6d | 2016-09-12 | 2016-09-19 |  | 100% |
| 45 |  | prépa revue | 17d | 2016-10-14 | 2016-11-08 | 23 |  |
| 46 | 4 | **Semestre 2 lot 3** | 17d | 2016-11-09 | 2016-12-02 | 45 | 11% |
| 47 |  | Géolocalisation BE | 1d | 2016-11-09 | 2016-11-09 |  | 100% |
| 48 |  | Carte des interventions | 1d | 2016-11-09 | 2016-11-09 |  | 100% |
| 49 |  | Carte des établissements | 1d | 2016-11-09 | 2016-11-09 |  | 100% |
| 50 |  | Filtres interventions à +/- 10km | 5d | 2016-11-10 | 2016-11-17 | 47 |  |
| 51 |  | Mails - problème mailto | 1d | 2016-11-09 | 2016-11-09 |  | 100% |
| 52 |  | Filtres pour mailing | 5d | 2016-11-10 | 2016-11-17 | 51 |  |
| 53 |  | Crontab pour étaler les envois | 1d | 2016-11-10 | 2016-11-10 | 51 |  |
| 54 |  | Obtenir mails + plaquettes | 1d | 2016-11-09 | 2016-11-09 |  |  |
| 55 |  | Mails de rappel | 2d | 2016-11-18 | 2016-11-21 | 52 |  |
| 56 |  | Bouton "demande associée" sur interv | 3d | 2016-11-09 | 2016-11-14 |  |  |
| 57 |  | Sur modif interv : notes avec les moments | 2d | 2016-11-15 | 2016-11-16 | 56 |  |
| 58 |  | Warning quand date != demande | 2d | 2016-11-17 | 2016-11-18 | 57 |  |
| 59 |  | Form sans ID | 7d | 2016-11-21 | 2016-11-29 | 58 |  |
| 60 |  | Form : Enlever les négatifs dans nb participants | 1d | 2016-11-09 | 2016-11-09 |  |  |
| 61 |  | Page recapitulative + print | 3d | 2016-11-10 | 2016-11-15 | 60 |  |
| 62 |  | Problème : date passé : interventions rouges quelque soit le bénévole | 2d | 2016-11-16 | 2016-11-17 | 61 |  |
| 63 |  | Liste : s'attribuer -> désattribuer -> s'attribuer | 2d | 2016-11-18 | 2016-11-21 | 62 |  |
| 64 |  | Planning : détails sur une journée | 3d | 2016-11-22 | 2016-11-24 | 63 |  |
| 65 |  | Mes interventions + filtres | 1d | 2016-11-22 | 2016-11-22 | 63 |  |
| 66 |  | Coder l'ID pour mail | 3d | 2016-11-09 | 2016-11-14 |  |  |
| 67 |  | Hashage de l'id dans le lien | 2d | 2016-11-15 | 2016-11-16 | 66 |  |
| 68 |  | Ventes sur stand | 2d | 2016-11-17 | 2016-11-18 | 67 |  |
| 69 |  | Consultation Frimousse : vente | 2d | 2016-11-21 | 2016-11-22 | 68 |  |
| 70 |  | Ajouter rôles | 5d | 2016-11-23 | 2016-11-29 | 69 |  |

| ID | Task | Duration | Start | Finish | Predecessors |
| --- | --- | --- | --- | --- | --- |
| 71 | Stats nb interventions | 3d | 2016-11-09 | 2016-11-14 |  |
| 72 | Stats Chiffre d'affaire | 3d | 2016-11-21 | 2016-11-23 | 68, 71 |
| 73 | Map intervention ronds population-like | 3d | 2016-11-24 | 2016-11-28 | 72 |
| 74 | Optimiser les requetes | 3d | 2016-11-30 | 2016-12-02 |  |

## Version 2 (saved 2016-11-09)

Note of the change: Merge branch 'master' of https://monprojet.insa-rouen.fr/git/pic_unicef

Last finish stays 2016-12-02. Complete tasks 41 → 40.

Added:

| ID | Task | Duration | Start | Finish | Predecessors |
| --- | --- | --- | --- | --- | --- |
| 46 | Phase de specification lot3 | 1d | 2016-11-07 | 2016-11-07 | 45 |
| 47 | Phase de conception lot3 | 1d | 2016-11-08 | 2016-11-08 | 46 |

Changed:

| ID | Task | Finish | Duration | Complete | Predecessors |
| --- | --- | --- | --- | --- | --- |
| 23 | **Semestre 2 lot 2** |  |  | 93% → 94% |  |
| 35 | Tests Unitaire |  |  | 35% → 50% |  |
| 45 | prépa revue | 2016-11-08 → 2016-11-04 (-4d) | 17d → 15d | 0% → 100% |  |
| 48 | **Semestre 2 lot 3** |  |  | 11% → 4% | 45 → 47 |
| 49 | Géolocalisation BE |  |  | 100% → 55% |  |
| 51 | Carte des établissements |  |  | 100% → 55% |  |
